# AuraHealth_v5.xml

Schedule from ProjectLibre, 2026-09-28 to 2026-12-29.

## Calendars

- I5: Mon-Fri 09:00-11:30; Sat-Sun off.

## Resources

| Resource |
| --- |
| No Asignado |
| I1 |
| I2 |
| I3 |
| I4 |
| I5 |

## Schedule

| ID | WBS | Task | Duration | Start | Finish | Predecessors | Resources |
| --- | --- | --- | --- | --- | --- | --- | --- |
| 1 | 1 | **Sala Medica Privada - Enunciado 2 (v5)** | 20.81d | 2026-09-28 | 2026-12-29 |  |  |
| 2 | 1.1 | **Sprint 1 - Cimientos y agenda** | 12.65d | 2026-09-28 | 2026-11-23 |  |  |
| 3 | 1.1.1 | Refinement Sprint 1 - conocimiento de las US | 0.31d | 2026-09-28 | 2026-09-28 |  |  |
| 4 | 1.1.2 | US-01 Registro y gestion de la cuenta de usuario | 1.65d | 2026-09-29 | 2026-10-06 | 3 | I1 |
| 5 | 1.1.3 | US-02 Inicio de sesion con interfaz segun rol | 1.24d | 2026-10-07 | 2026-10-13 | 4SS+2d | I2 |
| 6 | 1.1.4 | US-03 Alta y baja de usuarios internos | 1.24d | 2026-10-15 | 2026-10-21 | 5SS+2d | I2 |
| 7 | 1.1.5 | US-06 Carga de disponibilidad mensual y validacion de jornadas | 2.06d | 2026-10-26 | 2026-11-03 | 6SS+2d | I5 |
| 8 | 1.1.6 | US-08 Generacion automatica de turnos de 30 minutos | 1.65d | 2026-11-03 | 2026-11-11 | 7 | I3 |
| 9 | 1.1.7 | US-11 Vista de agenda del profesional | 1.65d | 2026-11-12 | 2026-11-19 | 8SS+2d | I4 |
| 10 | 1.1.8 | Demo Sprint 1 (jue 08/10) | 0.31d | 2026-11-19 | 2026-11-20 | 4, 5, 6, 7, 8, 9 |  |
| 11 | 1.1.9 | Testing de regresion y cierre Sprint 1 | 0.31d | 2026-11-20 | 2026-11-23 | 10 |  |
| 12 | 1.2 | **Sprint 2 - Ciclo de reserva de turnos** | 13.22d | 2026-10-07 | 2026-12-04 |  |  |
| 13 | 1.2.1 | Refinement Sprint 2 - conocimiento de las US | 0.31d | 2026-11-23 | 2026-11-24 | 11 |  |
| 14 | 1.2.2 | US-21 Servicio de envio de notificaciones por email | 1.24d | 2026-10-07 | 2026-10-13 | 4SS+2d | I1 |
| 15 | 1.2.3 | US-10 Apertura automatica de la agenda | 0.82d | 2026-11-11 | 2026-11-13 | 8 | I3 |
| 16 | 1.2.4 | US-12 Busqueda de disponibilidad de turnos | 0.82d | 2026-11-13 | 2026-11-18 | 15 | I4 |
| 17 | 1.2.5 | US-13 Reserva de turno | 1.24d | 2026-11-24 | 2026-11-30 | 16SS+2d | I2 |
| 18 | 1.2.6 | US-14 Confirmacion de reserva por email | 0.82d | 2026-11-30 | 2026-12-02 | 17, 14 | I3 |
| 19 | 1.2.7 | US-15 Recordatorio automatico de turno | 0.82d | 2026-11-30 | 2026-12-02 | 17, 14 | I5 |
| 20 | 1.2.8 | US-16 Cancelacion de turno por el paciente | 0.82d | 2026-11-30 | 2026-12-02 | 17, 14 | I4 |
| 21 | 1.2.9 | US-18 Registro del estado del turno | 0.82d | 2026-11-30 | 2026-12-02 | 17 | I1 |
| 22 | 1.2.10 | US-20 Control de concurrencia en la reserva | 0.82d | 2026-11-30 | 2026-12-02 | 17 | I2 |
| 23 | 1.2.11 | US-64 Reserva de turno a nombre de otra persona | 0.82d | 2026-11-30 | 2026-12-02 | 17 | I5 |
| 24 | 1.2.12 | Correccion de bugs del Sprint 1 (I3) | 0.41d | 2026-11-30 | 2026-12-01 | 17 | I3 |
| 25 | 1.2.13 | Correccion de bugs del Sprint 1 (I4) | 0.41d | 2026-11-30 | 2026-12-01 | 17 | I4 |
| 26 | 1.2.14 | Correccion de bugs del Sprint 1 (I5) | 0.41d | 2026-11-30 | 2026-12-01 | 17 | I5 |
| 27 | 1.2.15 | Demo Sprint 2 (jue 22/10) | 0.31d | 2026-12-02 | 2026-12-03 | 14, 15, 16, 17, 18, 19, 20, 21, 22, 23, 24, 25, 26 |  |
| 28 | 1.2.16 | Testing de regresion y cierre Sprint 2 | 0.31d | 2026-12-03 | 2026-12-04 | 27 |  |

Notes:
- 4: 4 puntos x 3,30 h = 13,2 h. Implementador unico: I1, 5,3 dias a 2,5 h por dia.
- 5: 3 puntos x 3,30 h = 9,9 h. Implementador unico: I2, 4,0 dias a 2,5 h por dia.
- 6: 3 puntos x 3,30 h = 9,9 h. Implementador unico: I2, 4,0 dias a 2,5 h por dia.
- 7: 5 puntos x 3,30 h = 16,5 h. Implementador unico: I5, 6,6 dias a 2,5 h por dia.
- 8: 4 puntos x 3,30 h = 13,2 h. Implementador unico: I3, 5,3 dias a 2,5 h por dia.
- 9: 4 puntos x 3,30 h = 13,2 h. Implementador unico: I4, 5,3 dias a 2,5 h por dia.
- 14: 3 puntos x 3,30 h = 9,9 h. Implementador unico: I1, 4,0 dias a 2,5 h por dia.
- 15: 2 puntos x 3,30 h = 6,6 h. Implementador unico: I3, 2,6 dias a 2,5 h por dia.
- 16: 2 puntos x 3,30 h = 6,6 h. Implementador unico: I4, 2,6 dias a 2,5 h por dia.
- 17: 3 puntos x 3,30 h = 9,9 h. Implementador unico: I2, 4,0 dias a 2,5 h por dia.
- 18: 2 puntos x 3,30 h = 6,6 h. Implementador unico: I3, 2,6 dias a 2,5 h por dia.
- 19: 2 puntos x 3,30 h = 6,6 h. Implementador unico: I5, 2,6 dias a 2,5 h por dia.
- 20: 2 puntos x 3,30 h = 6,6 h. Implementador unico: I4, 2,6 dias a 2,5 h por dia.
- 21: 2 puntos x 3,30 h = 6,6 h. Implementador unico: I1, 2,6 dias a 2,5 h por dia.
- 22: 2 puntos x 3,30 h = 6,6 h. Implementador unico: I2, 2,6 dias a 2,5 h por dia.
- 23: 2 puntos x 3,30 h = 6,6 h. Implementador unico: I5, 2,6 dias a 2,5 h por dia.
- 24: 1 puntos x 3,30 h = 3,3 h. Implementador unico: I3, 1,3 dias a 2,5 h por dia.
- 25: 1 puntos x 3,30 h = 3,3 h. Implementador unico: I4, 1,3 dias a 2,5 h por dia.
- 26: 1 puntos x 3,30 h = 3,3 h. Implementador unico: I5, 1,3 dias a 2,5 h por dia.

| ID | WBS | Task | Duration | Start | Finish | Predecessors | Resources |
| --- | --- | --- | --- | --- | --- | --- | --- |
| 29 | 1.3 | **Sprint 3 - Pagos, historial clinico y reportes** | 13.7d | 2026-10-21 | 2026-12-22 |  |  |
| 30 | 1.3.1 | Refinement Sprint 3 - conocimiento de las US | 0.31d | 2026-12-04 | 2026-12-07 | 28 |  |
| 31 | 1.3.2 | US-33 Definicion del costo de la consulta por el medico | 0.82d | 2026-10-21 | 2026-10-26 | 6 | I5 |
| 32 | 1.3.3 | US-32 Gestion de la cobertura medica | 0.82d | 2026-12-02 | 2026-12-07 | 23 | I1 |
| 33 | 1.3.4 | US-39 Ficha de diagnostico del paciente | 1.24d | 2026-12-02 | 2026-12-08 | 21 | I3 |
| 34 | 1.3.5 | US-45 Reporte de turnos por especialidad | 0.82d | 2026-12-02 | 2026-12-07 | 21 | I4 |
| 35 | 1.3.6 | US-34 Calculo del importe segun cobertura | 1.24d | 2026-12-07 | 2026-12-11 | 21, 32, 31 | I1 |
| 36 | 1.3.7 | US-40 Consulta de la ficha del paciente | 0.82d | 2026-12-11 | 2026-12-15 | 33SS+2d | I3 |
| 37 | 1.3.8 | US-41 Historial clinico del paciente | 0.82d | 2026-12-11 | 2026-12-15 | 33SS+2d | I4 |
| 38 | 1.3.9 | US-35 Registro del pago en efectivo o por transferencia | 0.82d | 2026-12-11 | 2026-12-15 | 35 | I2 |
| 39 | 1.3.10 | US-44 Auditoria de accesos al historial | 0.41d | 2026-12-15 | 2026-12-17 | 36, 37 | I4 |
| 40 | 1.3.11 | US-36 Comprobante de pago en PDF | 0.82d | 2026-12-15 | 2026-12-18 | 38 | I2 |
| 41 | 1.3.12 | US-47 Reporte de pagos realizados | 0.41d | 2026-12-15 | 2026-12-17 | 38 | I2 |
| 42 | 1.3.13 | Correccion de bugs del Sprint 2 | 1.24d | 2026-12-11 | 2026-12-17 | 35 | I5 |
| 43 | 1.3.14 | Demo Sprint 3 (jue 12/11) | 0.31d | 2026-12-18 | 2026-12-21 | 31, 32, 33, 34, 35, 36, 37, 38, 39, 40, 41, 42 |  |
| 44 | 1.3.15 | Testing de regresion y cierre Sprint 3 | 0.31d | 2026-12-21 | 2026-12-22 | 43 |  |
| 45 | 1.4 | Cierre del proyecto e informe final | 1.56d | 2026-12-22 | 2026-12-29 | 44 |  |

Notes:
- 31: 2 puntos x 3,30 h = 6,6 h. Implementador unico: I5, 2,6 dias a 2,5 h por dia.
- 32: 2 puntos x 3,30 h = 6,6 h. Implementador unico: I1, 2,6 dias a 2,5 h por dia.
- 33: 3 puntos x 3,30 h = 9,9 h. Implementador unico: I3, 4,0 dias a 2,5 h por dia.
- 34: 2 puntos x 3,30 h = 6,6 h. Implementador unico: I4, 2,6 dias a 2,5 h por dia.
- 35: 3 puntos x 3,30 h = 9,9 h. Implementador unico: I1, 4,0 dias a 2,5 h por dia.
- 36: 2 puntos x 3,30 h = 6,6 h. Implementador unico: I3, 2,6 dias a 2,5 h por dia.
- 37: 2 puntos x 3,30 h = 6,6 h. Implementador unico: I4, 2,6 dias a 2,5 h por dia.
- 38: 2 puntos x 3,30 h = 6,6 h. Implementador unico: I2, 2,6 dias a 2,5 h por dia.
- 39: 1 puntos x 3,30 h = 3,3 h. Implementador unico: I4, 1,3 dias a 2,5 h por dia.
- 40: 2 puntos x 3,30 h = 6,6 h. Implementador unico: I2, 2,6 dias a 2,5 h por dia.
- 41: 1 puntos x 3,30 h = 3,3 h. Implementador unico: I2, 1,3 dias a 2,5 h por dia.
- 42: 3 puntos x 3,30 h = 9,9 h. Implementador unico: I5, 4,0 dias a 2,5 h por dia.
